# 草海典型性水域水生态保护与修复工程(施工总进度计划)

Schedule from a web Gantt chart, 2023-11-13 to 2025-08-02.
Every day is a working day

## Schedule

| ID | WBS | Task | Duration | Start | Finish | Predecessors | Status |
| --- | --- | --- | --- | --- | --- | --- | --- |
| 2 | 1 | **施工准备（已获得省林业局审批）** | 40d | 2023-11-13 | 2023-12-22 |  |  |
| 3 | 1.1 | 临时用地申请手续 | 40d | 2023-11-13 | 2023-12-22 |  | waiting |
| 4 | 1.2 | 人员、材料准备 | 7d | 2023-11-13 | 2023-11-19 |  |  |
| 5 | 2 | **一、退耕还湖湿地** | 245d | 2023-11-20 | 2024-07-21 |  |  |
| 6 | 2.1 | **生态围隔布设工程** | 20d | 2023-11-20 | 2023-12-09 |  |  |
| 7 | 2.1.1 | 拦鱼网布设 | 20d | 2023-11-20 | 2023-12-09 | 4 | waiting |
| 8 | 2.2 | **鱼类种群调控工程** | 225d | 2023-12-10 | 2024-07-21 |  |  |
| 9 | 2.2.1 | 清除鱼类 | 10d | 2023-12-10 | 2023-12-19 | 7 | waiting |
| 10 | 2.2.2 | 鱼类投放 | 10d | 2024-07-12 | 2024-07-21 | 14 | waiting |
| 11 | 2.3 | **底质改良** | 5d | 2023-12-20 | 2023-12-24 |  |  |
| 12 | 2.3.1 | 投撒底质改良剂 | 5d | 2023-12-20 | 2023-12-24 | 9 | waiting |
| 13 | 2.4 | **水生植物恢复工程** | 200d | 2023-12-25 | 2024-07-11 |  |  |
| 14 | 2.4.1 | 沉水植物种植及补种 | 200d | 2023-12-25 | 2024-07-11 | 12, 9 | waiting |
| 15 | 3 | **二、入湖河口湿地** | 602d | 2023-12-10 | 2025-08-02 |  |  |
| 16 | 3.1 | **临时场地场地建设** | 79d | 2023-12-23 | 2024-03-10 |  |  |
| 17 | 3.1.1 | 临时场地基础建设 | 50d | 2023-12-23 | 2024-02-10 | 3 | waiting |
| 18 | 3.1.2 | 临时场地设备进场及安装 | 20d | 2024-02-20 | 2024-03-10 |  |  |
| 19 | 3.2 | **生态围隔布设工程** | 50d | 2023-12-10 | 2024-01-28 |  |  |
| 20 | 3.2.1 | 拦鱼网布设 | 20d | 2023-12-10 | 2023-12-29 | 7 | waiting |
| 21 | 3.2.2 | 软围隔布设 | 30d | 2023-12-30 | 2024-01-28 | 20 | waiting |
| 22 | 3.3 | **鱼类种群调控工程** | 342d | 2024-01-29 | 2025-01-04 |  |  |
| 23 | 3.3.1 | 清除鱼类 | 30d | 2024-01-29 | 2024-02-27 | 21 | waiting |
| 24 | 3.3.2 | 鱼类投放 | 10d | 2024-12-26 | 2025-01-04 | 33 | waiting |
| 25 | 3.4 | **表层浮泥清除** | 480d | 2024-03-11 | 2025-07-03 |  |  |
| 26 | 3.4.1 | 表层浮泥清除第一期 | 40d | 2024-03-11 | 2024-04-19 | 18 | waiting |
| 27 | 3.4.2 | 六个月观察期 | 180d | 2024-04-20 | 2024-10-16 | 26 | waiting |
| 28 | 3.4.3 | 表层浮泥清除第二期 | 40d | 2024-10-17 | 2024-11-25 | 27 | waiting |
| 29 | 3.4.4 | 六个月观察期 | 180d | 2024-11-26 | 2025-05-24 | 28 | waiting |
| 30 | 3.4.5 | 表层浮泥清除第三期 | 40d | 2025-05-25 | 2025-07-03 | 29 | waiting |

| ID | WBS | Task | Duration | Start | Finish | Predecessors | Status |
| --- | --- | --- | --- | --- | --- | --- | --- |
| 31 | 3.5 | **水生植物恢复工程** | 470d | 2024-04-20 | 2025-08-02 |  |  |
| 32 | 3.5.1 | 沉水植物种植及补种第一期（约8.67万平方） | 60d | 2024-04-20 | 2024-06-18 | 26 | waiting |
| 33 | 3.5.2 | 沉水植物种植及补种第二期（约3.33万平方） | 30d | 2024-11-26 | 2024-12-25 | 28 | waiting |
| 34 | 3.5.3 | 沉水植物种植及补种第三期（约3万平） | 30d | 2025-07-04 | 2025-08-02 | 30 | waiting |
| 35 | 4 | **三、敞水区** | 130d | 2024-05-01 | 2024-09-07 |  |  |
| 36 | 4.1 | **生态围隔布设工程** | 20d | 2024-05-01 | 2024-05-20 |  |  |
| 37 | 4.1.1 | 不透水围隔 | 20d | 2024-05-01 | 2024-05-20 |  |  |
| 38 | 4.1.2 | 拦鱼网 | 20d | 2024-05-01 | 2024-05-20 |  |  |
| 39 | 4.2 | **鱼类种群调控工程** | 110d | 2024-05-21 | 2024-09-07 |  |  |
| 40 | 4.2.1 | 清除鱼类 | 10d | 2024-05-21 | 2024-05-30 | 37, 38 | waiting |
| 41 | 4.2.2 | 鱼类投放 | 10d | 2024-08-29 | 2024-09-07 | 43 | waiting |
| 42 | 4.3 | **水生植物恢复工程** | 90d | 2024-05-31 | 2024-08-28 |  |  |
| 43 | 4.3.1 | 沉水植物种植及补种 | 90d | 2024-05-31 | 2024-08-28 | 40 | waiting |
| 44 | 5 | **四、水生态监管能力建设** | 366d | 2024-01-01 | 2024-12-31 |  |  |
| 45 | 5.1 | 跟踪监测评估 | 366d | 2024-01-01 | 2024-12-31 |  |  |
| 46 | 5.2 | 测藻仪采购及安装 | 275d | 2024-04-01 | 2024-12-31 |  |  |
| 47 | 5.3 | 水生态管理能力建设报告编制 | 275d | 2024-04-01 | 2024-12-31 |  |  |
